How a schedule from GanttProject changed from version to version. A marks actual dates.

## Version 1 (saved 2020-05-02)

Note of the change: Add gan file

| ID | WBS | Task | Duration | Start | Finish | Predecessors | Complete |
| --- | --- | --- | --- | --- | --- | --- | --- |
| 1 | 1 | **프로젝트 관리** | 11d | 2018-12-04 | 2018-12-18 |  | 100% |
| 2 |  | 스케쥴 수립 | 2d | 2018-12-04 | 2018-12-05 |  | 100% |
| 3 |  | (산출물) 개발계획서 | 0d | 2018-12-06 | 2018-12-06 | 2 | 100% |
| 4 |  | 사양 설정 | 9d | 2018-12-06 | 2018-12-18 | 2 | 100% |
| 5 |  | (산출물) 사양서 | 0d | 2018-12-19 | 2018-12-19 | 4 | 100% |
| 6 | 2 | **제품디자인** | 10d | 2018-12-06 | 2018-12-19 |  | 100% |
| 7 |  | 1차 디자인 시안 | 3d | 2018-12-06 | 2018-12-10 | 2 | 100% |
| 8 |  | 2차 디자인 시안 | 7d | 2018-12-11 | 2018-12-19 | 7 | 100% |
| 9 |  | (산출물) 디자인 확정안 | 0d | 2018-12-20 | 2018-12-20 | 8 | 100% |
| 10 | 3 | **회로개발** | 34d | 2018-12-19 | 2019-02-04 |  | 50% |
| 11 |  | 아키텍쳐 설계 | 5d | 2018-12-19 | 2018-12-25 | 5 | 100% |
| 12 |  | 상세설계 | 15d | 2018-12-26 | 2019-01-15 | 11 | 50% |
| 13 |  | (산출물) 회로도면 | 0d | 2019-01-16 | 2019-01-16 | 12 |  |
| 14 |  | 부품조달 | 14d | 2019-01-16 | 2019-02-04 | 13 |  |
| 15 | 4 | **기구개발** | 33d | 2018-12-19 | 2019-02-01 |  | 50% |
| 16 |  | 대략설계 | 4d | 2018-12-19 | 2018-12-24 | 5 | 100% |
| 17 |  | 상세설계 | 15d | 2018-12-25 | 2019-01-14 | 16 | 50% |
| 18 |  | (산출물) 기구도면 | 0d | 2019-01-15 | 2019-01-15 | 17 |  |
| 19 |  | 부품조달 | 14d | 2019-01-15 | 2019-02-01 | 18 |  |
| 20 | 5 | **소프트웨어개발** | 55d | 2018-12-19 | 2019-03-05 |  | 50% |
| 21 |  | 아키텍쳐 설계 | 5d | 2018-12-19 | 2018-12-25 | 5 | 100% |
| 22 |  | 구현 | 20d | 2018-12-26 | 2019-01-22 | 21 | 50% |
| 23 |  | (산출물) 소스코드 | 0d | 2019-01-23 | 2019-01-23 | 22 |  |
| 24 |  | 디버깅 | 30d | 2019-01-23 | 2019-03-05 | 23 |  |
| 25 | 6 | **조립 및 테스트** | 70d | 2019-02-04 | 2019-05-10 |  |  |
| 26 |  | 1차 조립 및 테스트 | 7d | 2019-02-04 | 2019-02-12 | 19 |  |
| 27 |  | (산출물) 시제품 | 0d | 2019-02-13 | 2019-02-13 | 26 |  |
| 28 |  | 1차 수정보완 | 14d | 2019-02-13 | 2019-03-04 | 27 |  |
| 29 |  | 2차 조립 및 테스트 | 15d | 2019-03-05 | 2019-03-25 | 28 |  |
| 30 |  | 2차 수정보완 | 14d | 2019-03-26 | 2019-04-12 | 29 |  |
| 31 |  | (산출물) 결과보고서 | 0d | 2019-04-15 | 2019-04-15 | 30 |  |
| 32 |  | 현장 운용 테스트 | 20d | 2019-04-15 | 2019-05-10 | 31 |  |

## Version 2 (saved 2020-05-27)

Note of the change: Update to mermaid 8.5.1

Last finish 2019-05-10 → 2020-08-25 (+473d). Complete tasks 10 → 6.

Removed: 1 프로젝트 관리; 2 스케쥴 수립; 3 (산출물) 개발계획서; 4 사양 설정; 5 (산출물) 사양서

Changed:

| ID | Task | Start | Finish | Complete | Predecessors |
| --- | --- | --- | --- | --- | --- |
| 1 | **제품디자인** | 2018-12-06 → 2020-04-03 (+484d) | 2018-12-19 → 2020-04-16 (+484d) |  |  |
| 2 | 1차 디자인 시안 | 2018-12-06 → 2020-04-03 (+484d) | 2018-12-10 → 2020-04-07 (+484d) |  | 스케쥴 수립 → none |
| 3 | 2차 디자인 시안 | 2018-12-11 → 2020-04-08 (+484d) | 2018-12-19 → 2020-04-16 (+484d) |  |  |
| 4 | (산출물) 디자인 확정안 | 2018-12-20 → 2020-04-17 (+484d) | 2018-12-20 → 2020-04-17 (+484d) |  |  |
| 5 | **회로개발** | 2018-12-19 → 2020-04-03 (+471d) | 2019-02-04 → 2020-05-20 (+471d) | 50% → 35% |  |
| 6 | 아키텍쳐 설계 | 2018-12-19 → 2020-04-03 (+471d) | 2018-12-25 → 2020-04-09 (+471d) |  | (산출물) 사양서 → none |
| 7 | 상세설계 | 2018-12-26 → 2020-04-10 (+471d) | 2019-01-15 → 2020-04-30 (+471d) |  |  |
| 8 | (산출물) 회로도면 | 2019-01-16 → 2020-05-01 (+471d) | 2019-01-16 → 2020-05-01 (+471d) |  |  |
| 9 | 부품조달 | 2019-01-16 → 2020-05-01 (+471d) | 2019-02-04 → 2020-05-20 (+471d) |  |  |
| 10 | **기구개발** | 2018-12-19 → 2020-04-03 (+471d) | 2019-02-01 → 2020-05-19 (+473d) | 50% → 33% |  |
| 11 | 대략설계 | 2018-12-19 → 2020-04-03 (+471d) | 2018-12-24 → 2020-04-08 (+471d) |  | (산출물) 사양서 → none |
| 12 | 상세설계 | 2018-12-25 → 2020-04-09 (+471d) | 2019-01-14 → 2020-04-29 (+471d) |  |  |
| 13 | (산출물) 기구도면 | 2019-01-15 → 2020-04-30 (+471d) | 2019-01-15 → 2020-04-30 (+471d) |  |  |
| 14 | 부품조달 | 2019-01-15 → 2020-04-30 (+471d) | 2019-02-01 → 2020-05-19 (+473d) |  |  |
| 15 | **소프트웨어개발** | 2018-12-19 → 2020-04-03 (+471d) | 2019-03-05 → 2020-06-18 (+471d) | 50% → 26% |  |
| 16 | 아키텍쳐 설계 | 2018-12-19 → 2020-04-03 (+471d) | 2018-12-25 → 2020-04-09 (+471d) |  | (산출물) 사양서 → none |
| 17 | 구현 | 2018-12-26 → 2020-04-10 (+471d) | 2019-01-22 → 2020-05-07 (+471d) |  |  |
| 18 | (산출물) 소스코드 | 2019-01-23 → 2020-05-08 (+471d) | 2019-01-23 → 2020-05-08 (+471d) |  |  |
| 19 | 디버깅 | 2019-01-23 → 2020-05-08 (+471d) | 2019-03-05 → 2020-06-18 (+471d) |  |  |
| 20 | **조립 및 테스트** | 2019-02-04 → 2020-05-20 (+471d) | 2019-05-10 → 2020-08-25 (+473d) |  |  |
| 21 | 1차 조립 및 테스트 | 2019-02-04 → 2020-05-20 (+471d) | 2019-02-12 → 2020-05-28 (+471d) |  |  |
| 22 | (산출물) 시제품 | 2019-02-13 → 2020-05-29 (+471d) | 2019-02-13 → 2020-05-29 (+471d) |  |  |
| 23 | 1차 수정보완 | 2019-02-13 → 2020-05-29 (+471d) | 2019-03-04 → 2020-06-17 (+471d) |  |  |
| 24 | 2차 조립 및 테스트 | 2019-03-05 → 2020-06-18 (+471d) | 2019-03-25 → 2020-07-08 (+471d) |  |  |
| 25 | 2차 수정보완 | 2019-03-26 → 2020-07-09 (+471d) | 2019-04-12 → 2020-07-28 (+473d) |  |  |
| 26 | (산출물) 결과보고서 | 2019-04-15 → 2020-07-29 (+471d) | 2019-04-15 → 2020-07-29 (+471d) |  |  |
| 27 | 현장 운용 테스트 | 2019-04-15 → 2020-07-29 (+471d) | 2019-05-10 → 2020-08-25 (+473d) |  |  |
